# 工作计划表

Schedule from MS Project, 2023-11-15 to 2023-12-13, A marks actual dates.

## Calendars

- 标准: Mon-Fri 08:00-12:00, 13:00-17:00; Sat-Sun off. Exceptions (off unless hours are given): 2023-12-02 to 2023-12-03 08:00-12:00, 13:00-17:00 (协议层开发加班).

## Resources

| Resource |
| --- |
| 林述华 |
| 李露露 |
| 白工 |
| 钟庆亮 |
| 熊俊康 |

## Schedule

| ID | WBS | Task | Type | Duration | Start | Finish | Predecessors | Complete | Remaining | Total slack | Free slack | Constraint | Resources | Work | Actual work |
| --- | --- | --- | --- | --- | --- | --- | --- | --- | --- | --- | --- | --- | --- | --- | --- |
| 1 | 1 | **1.前端界面模块** |  | 8d | 2023-11-27 08:00 A | 2023-12-04 17:00 |  | 25% | 6d |  |  |  |  | 32h | 8h |
| 2 | 1.1 | 连接界面 |  | 0.25d | 2023-11-27 08:00 A | 2023-11-27 10:00 A |  | 100% |  |  |  |  | 林述华 | 2h | 2h |
| 3 | 1.2 | 监控界面 |  | 0.5d | 2023-11-27 10:00 A | 2023-11-27 15:00 | 2 | 50% | 0.25d | 14.25d |  |  | 林述华 | 4h | 2h |
| 4 | 1.3 | 写入数据 |  | 0.25d | 2023-11-27 15:00 A | 2023-11-27 17:00 A | 3 | 100% |  |  |  |  | 林述华 | 2h | 2h |
| 5 | 1.4 | 查询点表 |  | 2d | 2023-11-28 08:00 A | 2023-11-29 17:00 | 4 | 13% | 1.75d | 11d | 0d |  | 林述华 | 16h | 2h |
| 6 | 1.5 | 向下对接联调 |  | 1d | 2023-11-30 08:00 | 2023-11-30 17:00 | 5 |  |  | 11d |  |  | 林述华 | 8h |  |
| 7 | 2 | **2.业务逻辑模块** |  | 7d | 2023-11-28 08:00 A | 2023-12-04 17:00 |  | 90% | 0.7d |  |  |  |  | 20h | 18h |
| 8 | 2.1 | 定义向上接口 | manual | 1.5d | 2023-11-28 08:00 A | 2023-11-29 12:00 A |  | 100% |  |  |  |  | 李露露 | 12h | 12h |
| 9 | 2.2 | 请求向下设备，编写功能 |  | 1d | 2023-11-29 13:00 A | 2023-11-30 12:00 | 8 | 75% | 0.25d | 9.5d | 0d |  | 李露露 | 8h | 6h |
| 10 | 3 | **3.设备模块** |  | 3d | 2023-11-28 08:00 A | 2023-11-30 17:00 |  | 50% | 1.5d |  |  |  |  | 16h | 8h |
| 11 | 3.1 | 编写向上接口 | manual | 1d | 2023-11-28 08:00 A | 2023-11-28 17:00 A |  | 100% |  |  |  |  | 白工 | 8h | 8h |
| 12 | 3.2 | 请求底层模块 | manual | 1d | 2023-11-30 08:00 | 2023-11-30 17:00 |  |  |  |  |  |  | 白工 | 8h |  |
| 13 | 4 | **4.协议模块** |  | 12d | 2023-11-28 08:00 A | 2023-12-11 17:00 |  | 5% | 11.45d | 0d |  |  |  | 88h | 4h |
| 14 | 4.1 | Modbus协议-G3/4 | manual | 2.5d | 2023-11-28 08:00 | 2023-11-30 12:00 |  |  |  |  |  |  | 钟庆亮 | 20h |  |
| 15 | 4.2 | CAN协议-（CAN旧） | manual | 4d | 2023-12-04 08:00 | 2023-12-07 17:00 |  |  |  |  |  |  | 钟庆亮 | 32h |  |
| 16 | 4.3 | CAN协议-（CAN新） | manual | 2d | 2023-12-08 08:00 | 2023-12-11 17:00 |  |  |  |  |  |  | 钟庆亮 | 16h |  |
| 17 | 4.4 | IEC104协议 | manual | 2d | 2023-12-02 08:00 | 2023-12-03 17:00 |  |  |  |  |  |  | 钟庆亮 | 16h |  |
| 18 | 4.5 | SGP | manual | 0.5d | 2023-11-29 08:00 A | 2023-11-29 12:00 A |  | 100% |  |  |  |  | 熊俊康 | 4h | 4h |
| 19 | 5 | **5.点表模块** |  | 8d | 2023-11-22 13:00 A | 2023-12-02 12:00 |  | 10% | 7.2d | 9.5d |  |  |  | 20h | 2h |
| 20 | 5.1 | 提供构造函数、公共接口 | manual | 0.5d | 2023-11-22 13:00 A | 2023-11-22 17:00 |  | 50% | 0.25d |  |  |  | 李露露 | 4h | 2h |
| 21 | 5.2 | 实现获取信息函数 |  | 0.5d | 2023-11-30 13:00 | 2023-11-30 17:00 | 9 |  |  | 9.5d | 0d | finish no earlier than 2023-11-30 15:00 | 李露露 | 4h |  |
| 22 | 5.3 | 实现序列化和反序列化函数 |  | 1d | 2023-12-01 08:00 | 2023-12-01 17:00 | 21 |  |  | 9.5d | 0d |  | 李露露 | 8h |  |
| 23 | 5.4 | 实现最优化算法函数 |  | 0.5d | 2023-12-02 08:00 | 2023-12-02 12:00 | 22 |  |  | 9.5d |  |  | 李露露 | 4h |  |
| 24 | 6 | **6.通讯模块** |  | 11.5d | 2023-11-30 13:00 A | 2023-12-13 17:00 |  | 14% | 9.86d | 0d |  |  |  | 28h | 4h |
| 25 | 6.1 | 串口通讯（Modbus RTU） | manual | 0.5d | 2023-11-30 13:00 A | 2023-11-30 17:00 A |  | 100% |  |  |  |  | 钟庆亮 | 4h | 4h |
| 26 | 6.2 | 网口通讯（Modbus TCP,IEC104） | manual | 1d | 2023-12-01 08:00 | 2023-12-01 17:00 |  |  |  |  |  |  | 钟庆亮 | 8h |  |
| 27 | 6.3 | 广成 ECAN通讯（CAN） | manual | 2d | 2023-12-12 08:00 | 2023-12-13 17:00 |  |  |  |  |  |  | 钟庆亮 | 16h |  |

Notes:
- 2: 已完成
- 3: 已完成
- 4: 已完成
- 5: 已完成
- 6: 未启动
- 8: 进行中
- 9: 未启动
- 10: 进行中
- 11: 已完成
- 12: 未启动
- 13: 进行中
- 14: 进行中
- 15: 未启动
- 16: 未启动
- 17: 未启动
- 18: 已完成
- 19: 进行中
- 20: 已完成
- 21: 进行中
- 22: 未启动
- 23: 未启动
- 24: 进行中
- 25: 已完成
- 26: 未启动
- 27: 未启动

| ID | WBS | Task | Type | Duration | Start | Finish | Complete | Remaining | Total slack | Resources | Work | Actual work |
| --- | --- | --- | --- | --- | --- | --- | --- | --- | --- | --- | --- | --- |
| 28 | 7 | **7.升级模块** |  | 13d | 2023-11-15 08:00 A | 2023-12-01 17:00 | 44% | 7.22d | 0d |  | 36h | 16h |
| 29 | 7.1 | 定义升级接口 | manual | 1d | 2023-11-15 08:00 A | 2023-11-15 17:00 A | 100% |  |  | 熊俊康 | 8h | 8h |
| 30 | 7.2 | G3协议（串口：U盘、SGP） | manual | 0.5d | 2023-11-28 08:00 A | 2023-11-28 12:00 A | 100% |  |  | 熊俊康 | 4h | 4h |
| 31 | 7.3 | G4协议（串口，网口：文件传输） | manual | 0.5d | 2023-11-28 13:00 A | 2023-11-28 17:00 A | 100% |  |  | 熊俊康 | 4h | 4h |
| 32 | 7.4 | IEC104协议（网口） | manual | 0.5d | 2023-11-29 13:00 | 2023-11-29 17:00 |  |  |  | 熊俊康 | 4h |  |
| 33 | 7.5 | SOFARCP（网口：文件传输） | manual | 1d | 2023-11-30 08:00 | 2023-11-30 17:00 |  |  |  | 熊俊康 | 8h |  |
| 34 | 7.6 | CAN协议-旧（CAN） | manual | 1d | 2023-12-01 08:00 | 2023-12-01 17:00 |  |  |  | 熊俊康 | 8h |  |
| 35 | 8 | **8.数据库** |  | 9d | 2023-11-21 08:00 A | 2023-12-01 17:00 | 50% | 4.5d | 0d |  | 24h | 12h |
| 36 | 8.1 | 数据库表设计 | manual | 1.5d | 2023-11-21 08:00 A | 2023-11-22 12:00 A | 100% |  |  | 李露露 | 12h | 12h |
| 37 | 8.2 | 数据库点表导入 | manual | 0.5d | 2023-11-29 08:00 | 2023-11-29 12:00 |  |  |  | 林述华 | 4h |  |
| 38 | 8.3 | 数据库提供使用 | manual | 1d | 2023-12-01 08:00 | 2023-12-01 17:00 |  |  |  | 林述华 | 8h |  |

Notes:
- 28: 进行中
- 29: 已完成
- 30: 已完成
- 31: 已完成
- 32: 进行中
- 33: 未启动
- 34: 未启动
- 35: 进行中
- 36: 已完成
- 37: 进行中
- 38: 未启动
