# 工作计划表20240102

Schedule from MS Project, 2023-11-14 to 2024-01-26, A marks actual dates.

## Calendars

- 标准: Mon-Fri 08:00-12:00, 13:00-17:00; Sat-Sun off. Exceptions (off unless hours are given): 2023-12-02 to 2023-12-03 08:00-12:00, 13:00-17:00 (协议层开发加班).

## Resources

| Resource |
| --- |
| 林述华 |
| 李露露 |
| 白工 |
| 钟庆亮 |
| 熊俊康 |
| 王晖 |
| 曾童年 |

## Schedule

| ID | WBS | Task | Type | Duration | Start | Finish | Predecessors | Complete | Remaining | Total slack | Free slack | Constraint | Resources | Work | Actual work |
| --- | --- | --- | --- | --- | --- | --- | --- | --- | --- | --- | --- | --- | --- | --- | --- |
| 1 | 1 | **1.前端界面模块** |  | 8d? | 2023-11-27 A | 2023-12-04 |  | 25% | 6d? | 39d |  |  |  | 32h | 8h |
| 2 | 1.1 | 1.前端界面模块 | milestone | 0d? | 2023-11-27 | 2023-11-27 |  |  |  | 0d |  | must start on 2023-11-27 |  |  |  |
| 3 | 1.2 | 1.前端界面模块 | milestone | 0d? | 2023-12-04 | 2023-12-04 |  |  |  | 0d |  | must finish on 2023-12-04 |  |  |  |
| 4 | 1.3 | 连接界面 |  | 0.25d | 2023-11-27 A | 2023-11-27 A |  | 100% |  |  |  |  | 林述华 | 2h | 2h |
| 5 | 1.4 | 监控界面 |  | 0.5d | 2023-11-27 A | 2023-11-27 | 4 | 50% | 0.25d | 46.25d |  |  | 林述华 | 4h | 2h |
| 6 | 1.5 | 写入数据 |  | 0.25d | 2023-11-27 A | 2023-11-27 A | 5 | 100% |  |  |  |  | 林述华 | 2h | 2h |
| 7 | 1.6 | 查询点表 |  | 2d | 2023-11-28 A | 2023-11-29 | 6 | 13% | 1.75d | 43d | 0d |  | 林述华 | 16h | 2h |
| 8 | 1.7 | 向下对接联调 |  | 1d | 2023-11-30 | 2023-11-30 | 7 |  |  | 43d |  |  | 林述华 | 8h |  |
| 9 | 2 | **2.业务逻辑模块** |  | 7d? | 2023-11-28 A | 2023-12-04 |  | 90% | 0.7d? | 37d |  |  |  | 20h | 18h |
| 10 | 2.1 | 2.业务逻辑模块 | milestone | 0d? | 2023-11-28 | 2023-11-28 |  |  |  | 0d |  | must start on 2023-11-28 |  |  |  |
| 11 | 2.2 | 2.业务逻辑模块 | milestone | 0d? | 2023-12-04 | 2023-12-04 |  |  |  | 0d |  | must finish on 2023-12-04 |  |  |  |
| 12 | 2.3 | 定义向上接口 |  | 1.5d | 2023-11-28 A | 2023-11-29 A |  | 100% |  |  |  | start no earlier than 2023-11-28 | 李露露 | 12h | 12h |
| 13 | 2.4 | 请求向下设备，编写功能 |  | 1d | 2023-11-29 A | 2023-11-30 | 12 | 75% | 0.25d | 41.5d | 0d |  | 李露露 | 8h | 6h |
| 14 | 3 | **3.设备模块** |  | 3d? | 2023-11-28 A | 2023-11-30 |  | 50% | 1.5d? | 43d |  |  |  | 16h | 8h |
| 15 | 3.1 | 3.设备模块 | milestone | 0d? | 2023-11-28 | 2023-11-28 |  |  |  | 0d |  | must start on 2023-11-28 |  |  |  |
| 16 | 3.2 | 3.设备模块 | milestone | 0d? | 2023-11-30 | 2023-11-30 |  |  |  | 0d |  | must finish on 2023-11-30 |  |  |  |
| 17 | 3.3 | 编写向上接口 |  | 1d | 2023-11-28 A | 2023-11-28 A |  | 100% |  |  |  | start no earlier than 2023-11-28 | 白工 | 8h | 8h |
| 18 | 3.4 | 请求底层模块 |  | 1d | 2023-11-30 | 2023-11-30 |  |  |  | 43d |  | start no earlier than 2023-11-30 | 白工 | 8h |  |
| 19 | 4 | **4.协议模块** |  | 12d | 2023-11-28 A | 2023-12-11 |  | 5% | 11.45d | 34d |  |  |  | 88h | 4h |
| 20 | 4.1 | Modbus协议-G3/4 |  | 2.5d | 2023-11-28 | 2023-11-30 |  |  |  | 43.5d |  | start no earlier than 2023-11-28 | 钟庆亮 | 20h |  |
| 21 | 4.2 | CAN协议-（CAN旧） |  | 4d | 2023-12-04 | 2023-12-07 |  |  |  | 36d |  | start no earlier than 2023-12-04 | 钟庆亮 | 32h |  |
| 22 | 4.3 | CAN协议-（CAN新） |  | 2d | 2023-12-08 | 2023-12-11 |  |  |  | 34d |  | start no earlier than 2023-12-08 | 钟庆亮 | 16h |  |
| 23 | 4.4 | IEC104协议 |  | 2d | 2023-12-02 | 2023-12-03 |  |  |  | 40d |  | start no earlier than 2023-12-02 | 钟庆亮 | 16h |  |
| 24 | 4.5 | SGP |  | 0.5d | 2023-11-29 A | 2023-11-29 A |  | 100% |  |  |  | start no earlier than 2023-11-29 | 熊俊康 | 4h | 4h |

Notes:
- 4: 已完成
- 5: 已完成
- 6: 已完成
- 7: 已完成
- 8: 未启动
- 12: 进行中
- 13: 未启动
- 14: 进行中
- 17: 已完成
- 18: 未启动
- 19: 进行中
- 20: 进行中
- 21: 未启动
- 22: 未启动
- 23: 未启动
- 24: 已完成

| ID | WBS | Task | Duration | Start | Finish | Predecessors | Complete | Remaining | Total slack | Free slack | Constraint | Resources | Work | Actual work |
| --- | --- | --- | --- | --- | --- | --- | --- | --- | --- | --- | --- | --- | --- | --- |
| 25 | 5 | **5.点表模块** | 8d | 2023-11-22 A | 2023-12-02 |  | 10% | 7.2d | 41.5d |  |  |  | 20h | 2h |
| 26 | 5.1 | 提供构造函数、公共接口 | 0.5d | 2023-11-22 A | 2023-11-22 |  | 50% | 0.25d | 49d |  | start no earlier than 2023-11-22 | 李露露 | 4h | 2h |
| 27 | 5.2 | 实现获取信息函数 | 0.5d | 2023-11-30 | 2023-11-30 | 13 |  |  | 41.5d | 0d | finish no earlier than 2023-11-30 | 李露露 | 4h |  |
| 28 | 5.3 | 实现序列化和反序列化函数 | 1d | 2023-12-01 | 2023-12-01 | 27 |  |  | 41.5d | 0d |  | 李露露 | 8h |  |
| 29 | 5.4 | 实现最优化算法函数 | 0.5d | 2023-12-02 | 2023-12-02 | 28 |  |  | 41.5d |  |  | 李露露 | 4h |  |
| 30 | 6 | **6.通讯模块** | 11.5d | 2023-11-30 A | 2023-12-13 |  | 14% | 9.86d | 32d |  |  |  | 28h | 4h |
| 31 | 6.1 | 串口通讯（Modbus RTU） | 0.5d | 2023-11-30 A | 2023-11-30 A |  | 100% |  |  |  | start no earlier than 2023-11-30 | 钟庆亮 | 4h | 4h |
| 32 | 6.2 | 网口通讯（Modbus TCP,IEC104） | 1d | 2023-12-01 | 2023-12-01 |  |  |  | 42d |  | start no earlier than 2023-12-01 | 钟庆亮 | 8h |  |
| 33 | 6.3 | 广成 ECAN通讯（CAN） | 2d | 2023-12-12 | 2023-12-13 |  |  |  | 32d |  | start no earlier than 2023-12-12 | 钟庆亮 | 16h |  |
| 34 | 7 | **7.升级模块** | 13d | 2023-11-15 A | 2023-12-01 |  | 44% | 7.22d | 42d |  |  |  | 36h | 16h |
| 35 | 7.1 | 定义升级接口 | 1d | 2023-11-15 A | 2023-11-15 A |  | 100% |  |  |  | start no earlier than 2023-11-15 | 熊俊康 | 8h | 8h |
| 36 | 7.2 | G3协议（串口：U盘、SGP） | 0.5d | 2023-11-28 A | 2023-11-28 A |  | 100% |  |  |  | start no earlier than 2023-11-28 | 熊俊康 | 4h | 4h |
| 37 | 7.3 | G4协议（串口，网口：文件传输） | 0.5d | 2023-11-28 A | 2023-11-28 A |  | 100% |  |  |  | start no earlier than 2023-11-28 | 熊俊康 | 4h | 4h |
| 38 | 7.4 | IEC104协议（网口） | 0.5d | 2023-11-29 | 2023-11-29 |  |  |  | 44d |  | start no earlier than 2023-11-29 | 熊俊康 | 4h |  |
| 39 | 7.5 | SOFARCP（网口：文件传输） | 1d | 2023-11-30 | 2023-11-30 |  |  |  | 43d |  | start no earlier than 2023-11-30 | 熊俊康 | 8h |  |
| 40 | 7.6 | CAN协议-旧（CAN） | 1d | 2023-12-01 | 2023-12-01 |  |  |  | 42d |  | start no earlier than 2023-12-01 | 熊俊康 | 8h |  |
| 41 | 8 | **8.数据库** | 9d | 2023-11-21 A | 2023-12-01 |  | 50% | 4.5d | 42d |  |  |  | 24h | 12h |
| 42 | 8.1 | 数据库表设计 | 1.5d | 2023-11-21 A | 2023-11-22 A |  | 100% |  |  |  | start no earlier than 2023-11-21 | 李露露 | 12h | 12h |
| 43 | 8.2 | 数据库点表导入 | 0.5d | 2023-11-29 | 2023-11-29 |  |  |  | 44.5d |  | start no earlier than 2023-11-29 | 林述华 | 4h |  |
| 44 | 8.3 | 数据库提供使用 | 1d | 2023-12-01 | 2023-12-01 |  |  |  | 42d |  | start no earlier than 2023-12-01 | 林述华 | 8h |  |
| 45 | 9 | **一、G3Monitor上位机** | 1d | 2023-12-20 A | 2023-12-20 A |  | 100% |  |  |  |  |  | 8h | 8h |
| 46 | 9.1 | 新增文件格式的读取功能(125KW储能机) | 1d | 2023-12-20 A | 2023-12-20 A |  | 100% |  |  |  | start no earlier than 2023-12-20 | 王晖 | 8h | 8h |
| 48 | 10 | **二、G4Monitor上位机** | 16d | 2023-12-29 | 2024-01-19 |  |  |  | 5d |  |  |  | 48h |  |
| 49 | 10.1 | 多语言翻译(320KW) | 4d | 2024-01-02 | 2024-01-05 |  |  |  | 15d |  | start no earlier than 2024-01-02 | 曾童年 | 32h |  |
| 50 | 10.2 | 校准参数功能异常(LEO4) | 1d | 2024-01-08 | 2024-01-08 |  |  |  | 14d |  | start no earlier than 2024-01-08 | 曾童年 | 8h |  |
| 51 | 10.3 | 指令打印和解析(售后服务) | 9d | 2024-01-09 | 2024-01-19 |  |  |  | 5d |  | start no earlier than 2024-01-09 |  |  |  |
| 52 | 10.4 | 调整软件内部定义(工商业储能) | 1d | 2023-12-29 | 2023-12-29 |  |  |  | 20d |  | start no earlier than 2023-12-29 | 王晖 | 8h |  |

Notes:
- 25: 进行中
- 26: 已完成
- 27: 进行中
- 28: 未启动
- 29: 未启动
- 30: 进行中
- 31: 已完成
- 32: 未启动
- 33: 未启动
- 34: 进行中
- 35: 已完成
- 36: 已完成
- 37: 已完成
- 38: 进行中
- 39: 未启动
- 40: 未启动
- 41: 进行中
- 42: 已完成
- 43: 进行中
- 44: 未启动
- 46: 待验证
- 49: 进行中
- 50: 未启动
- 51: 未启动
- 52: 待验证

| ID | WBS | Task | Duration | Start | Finish | Total slack | Constraint | Resources | Work |
| --- | --- | --- | --- | --- | --- | --- | --- | --- | --- |
| 53 | 11 | **三、CBS5000上位机** | 21d | 2023-12-08 | 2024-01-05 | 15d |  |  | 48h |
| 54 | 11.1 | 上位机抛出异常未处理(PCS+CBS) | 1d | 2023-12-08 | 2023-12-08 | 35d | start no earlier than 2023-12-08 | 李露露 | 8h |
| 55 | 11.2 | 存储信息未包含序列号(CBS) | 1d | 2023-12-28 | 2023-12-28 | 21d | start no earlier than 2023-12-28 | 李露露 | 8h |
| 56 | 11.3 | 产品线测试问题项(CBS) | 4d | 2024-01-02 | 2024-01-05 | 15d | start no earlier than 2024-01-02 | 李露露 | 32h |
| 57 | 12 | **四、LEO5/ControlHub** | 10d | 2024-01-15 | 2024-01-26 | 0d |  |  | 80h |
| 58 | 12.1 | IV扫描和故障录波(LEO3) | 5d | 2024-01-15 | 2024-01-19 | 5d | start no earlier than 2024-01-15 | 钟庆亮 | 40h |
| 59 | 12.2 | 多语言翻译(LEO3) | 5d | 2024-01-22 | 2024-01-26 | 0d | start no earlier than 2024-01-22 | 钟庆亮 | 40h |
| 60 | 13 | **五、通信箱上位机** | 17d | 2023-12-21 | 2024-01-12 | 10d |  |  | 64h |
| 61 | 13.1 | 通信箱升级异常(粘包+干扰现象) | 1d | 2023-12-21 | 2023-12-21 | 26d | start no earlier than 2023-12-21 | 钟庆亮 | 8h |
| 62 | 13.2 | 电站现场问题反馈(320KW) | 2d | 2024-01-02 | 2024-01-03 | 17d | start no earlier than 2024-01-02 | 钟庆亮 | 16h |
| 63 | 13.3 | 安规操作(PID) | 5d | 2024-01-08 | 2024-01-12 | 10d | start no earlier than 2024-01-08 | 钟庆亮 | 40h |
| 64 | 14 | **六、集储上位机CSU/CMU** | 4d | 2023-11-14 | 2023-11-17 | 52d |  |  | 24h |
| 65 | 14.1 | IEC104文件升级太慢(自研1.72MW PCS系统) | 0.5d | 2023-11-16 | 2023-11-16 | 53.5d | start no earlier than 2023-11-16 | 林述华 | 4h |
| 66 | 14.2 | IEC61850文件升级没有进度条(自研1.72MW PCS系统) | 0.5d | 2023-11-14 | 2023-11-14 | 55.5d | start no earlier than 2023-11-14 | 林述华 | 4h |
| 67 | 14.3 | 小桔云平台对接开发四元组信息配置功能(工商业储能) | 2d | 2023-11-16 | 2023-11-17 | 52d | start no earlier than 2023-11-16 | 林述华 | 16h |
| 68 | 15 | **七、整合上位机** | 1d? | 2023-11-29 | 2023-11-29 | 44d |  |  | 72h |
| 69 | 15.1 | 菜单关联点表生成 | 1d | 2023-11-29 | 2023-11-29 | 44d |  | 林述华 | 8h |
| 70 | 15.2 | **接口层负责人说明** | 1d | 2023-11-29 | 2023-11-29 | 44d |  |  | 48h |
| 71 | 15.2.1 | 点表和数据库的维护 | 1d | 2023-11-29 | 2023-11-29 | 44d |  | 林述华 | 8h |
| 72 | 15.2.2 | 前端UI界面绘制 | 1d | 2023-11-29 | 2023-11-29 | 44d |  | 林述华 | 8h |
| 73 | 15.2.3 | 底层-点表模块接口 | 1d | 2023-11-29 | 2023-11-29 | 44d |  | 李露露 | 8h |
| 74 | 15.2.4 | 底层-协议模块接口 | 1d | 2023-11-29 | 2023-11-29 | 44d |  | 钟庆亮 | 8h |
| 75 | 15.2.5 | 业务逻辑层的接口 | 1d | 2023-11-29 | 2023-11-29 | 44d |  | 李露露 | 8h |
| 76 | 15.2.6 | 底层-通讯模块接口 | 1d | 2023-11-29 | 2023-11-29 | 44d |  | 钟庆亮 | 8h |

Notes:
- 54: 待验证
- 55: 待验证
- 56: 未启动
- 58: 未启动
- 59: 未启动
- 61: 待验证
- 62: 进行中
- 63: 未启动
- 65: 待验证
- 66: 待验证
- 67: 未启动
- 69: 已完成
- 71: 进行中

| ID | WBS | Task | Duration | Start | Finish | Total slack | Resources | Work |
| --- | --- | --- | --- | --- | --- | --- | --- | --- |
| 77 | 15.3 | **菜单功能** | 1d? | 2023-11-29 | 2023-11-29 | 44d |  | 16h |
| 78 | 15.3.1 | 连接设备 | 1d? | 2023-11-29 | 2023-11-29 | 44d |  |  |
| 79 | 15.3.2 | 设备监控 | 1d? | 2023-11-29 | 2023-11-29 | 44d |  |  |
| 80 | 15.3.3 | 文件传输 | 1d | 2023-11-29 | 2023-11-29 | 44d | 熊俊康 | 8h |
| 81 | 15.3.4 | 运维调试 | 1d | 2023-11-29 | 2023-11-29 | 44d | 钟庆亮 | 8h |
| 82 | 15.3.5 | 数据库配置 | 1d? | 2023-11-29 | 2023-11-29 | 44d |  |  |
| 83 | 15.3.6 | **设置** | 1d? | 2023-11-29 | 2023-11-29 | 44d |  |  |
| 84 | 15.3.6.1 | 数据图形化 | 1d? | 2023-11-29 | 2023-11-29 | 44d |  |  |
| 85 | 15.3.6.2 | 仿真示波器 | 1d? | 2023-11-29 | 2023-11-29 | 44d |  |  |
| 86 | 15.3.6.3 | 仿真服务器 | 1d? | 2023-11-29 | 2023-11-29 | 44d |  |  |
| 87 | 15.3.6.4 | 报文解析器 | 1d? | 2023-11-29 | 2023-11-29 | 44d |  |  |

Notes:
- 78: 已完成
- 79: 进行中 / UI界面数据展示已实现 / UI界面暂未与通讯打通
- 80: 进行中 / 升级模块需要等待提供完整的通讯协议模块后联调
- 81: 已完成
- 83: 未启动
