# 工作计划表20240131

Schedule from MS Project, 2024-01-29 to 2024-03-01, A marks actual dates.

## Calendars

- 标准: Mon-Fri 08:00-12:00, 13:00-17:00; Sat-Sun off.

## Resources

| Resource |
| --- |
| 林述华 |
| 钟庆亮 |
| 曾童年 |
| 王晖 |
| 李露露 |

## Schedule

| ID | WBS | Task | Type | Duration | Start | Finish | Complete | Remaining | Total slack | Resources | Work | Actual work |
| --- | --- | --- | --- | --- | --- | --- | --- | --- | --- | --- | --- | --- |
| 1 | 1 | **G3协议开发** |  | 17d | 2024-01-29 A | 2024-02-20 | 17% | 14.07d | 0d |  | 136h | 20h |
| 2 | 1.1 | **IV扫描** |  | 17d | 2024-01-29 A | 2024-02-20 | 33% | 11.33d | 0d |  | 24h | 8h |
| 3 | 1.1.1 | IV扫描图表界面补充 | manual | 1d | 2024-01-29 A | 2024-01-29 A | 100% |  |  | 林述华 | 8h | 8h |
| 4 | 1.1.2 | 业务逻辑代码实现 | manual | 2d | 2024-02-19 | 2024-02-20 |  |  |  | 王晖 | 16h |  |
| 5 | 1.2 | **故障录播** |  | 4d | 2024-01-30 A | 2024-02-02 | 33% | 2.67d | 0d |  | 24h | 8h |
| 6 | 1.2.1 | 故障录波界面绘制 | manual | 1d | 2024-01-30 A | 2024-01-30 A | 100% |  |  | 林述华 | 8h | 8h |
| 7 | 1.2.2 | 业务逻辑代码实现 | manual | 2d | 2024-02-01 | 2024-02-02 |  |  |  | 王晖 | 16h |  |
| 8 | 1.3 | **多机管理** |  | 3d | 2024-01-31 A | 2024-02-02 | 14% | 2.57d | 0d |  | 48h | 4h |
| 9 | 1.3.1 | 登录界面添加批量管理模式 | manual | 0.5d | 2024-01-31 A | 2024-01-31 A | 100% |  |  | 林述华 | 4h | 4h |
| 10 | 1.3.2 | **菜单栏新增多设备管理设置** |  | 2.5d | 2024-01-31 | 2024-02-02 |  |  |  | 林述华 | 44h |  |
| 11 | 1.3.2.1 | 新增菜单，多设备管理界面 | manual | 1d | 2024-02-01 | 2024-02-01 |  |  |  | 林述华 | 8h |  |
| 12 | 1.3.2.2 | 新增菜单，多设备监控 | manual | 2d | 2024-02-01 | 2024-02-02 |  |  |  | 林述华 | 16h |  |
| 13 | 1.4 | 通讯层队列优化 | manual | 2d | 2024-02-01 | 2024-02-02 |  |  |  | 钟庆亮 | 16h |  |
| 14 | 1.5 | 监控模块的逻辑层调整 | manual | 3d | 2024-02-04 | 2024-02-06 |  |  |  | 李露露 | 24h |  |
| 15 | 2 | **G4协议开发** |  | 3d | 2024-02-19 | 2024-02-21 |  |  | 0d |  | 24h |  |
| 16 | 2.1 | G4点表导入 | manual | 3d | 2024-02-19 | 2024-02-21 |  |  |  | 林述华 | 24h |  |
| 17 | 3 | **CAN协议开发** |  | 8d | 2024-02-21 | 2024-03-01 |  |  | 0d |  | 104h |  |
| 18 | 3.1 | 通讯层迁移 | manual | 2.5d | 2024-02-22 | 2024-02-24 |  |  |  | 钟庆亮 | 20h |  |
| 19 | 3.2 | 点表结构设计 | manual | 0.5d | 2024-02-24 | 2024-02-24 |  |  |  | 钟庆亮 | 4h |  |
| 20 | 3.3 | 调试前端适配 | manual | 3d | 2024-02-22 | 2024-02-24 |  |  |  | 林述华 | 24h |  |
| 21 | 3.4 | 点表格式整理 | manual | 2d | 2024-02-21 | 2024-02-22 |  |  |  | 李露露 | 16h |  |
| 22 | 3.5 | “协议-指令”点表开发 | manual | 5d | 2024-02-26 | 2024-03-01 |  |  |  | 钟庆亮 | 40h |  |
| 23 | 4 | **测试** |  | 5d | 2024-02-21 | 2024-02-27 |  |  | 0d |  | 48h |  |
| 24 | 4.1 | G3设备IV扫描和故障录播的自测 | manual | 1d | 2024-02-21 | 2024-02-21 |  |  |  | 王晖 | 8h |  |
| 25 | 4.2 | G3设备的功能验证(内部整机测试) | manual | 3d | 2024-02-21 | 2024-02-23 |  |  |  | 曾童年 | 24h |  |
| 26 | 4.3 | CAN协议-调试模块(内部模块测试) | manual | 2d | 2024-02-26 | 2024-02-27 |  |  |  | 曾童年 | 16h |  |

Notes:
- 4: 处理工厂MES
- 20: （暂定成员）

| ID | WBS | Task | Type | Duration | Start | Finish | Complete | Remaining | Total slack | Resources | Work | Actual work |
| --- | --- | --- | --- | --- | --- | --- | --- | --- | --- | --- | --- | --- |
| 27 | 5 | **产品线需求项** |  | 16d | 2024-01-31 A | 2024-02-21 | 23% | 12.4d | 0d |  | 176h | 14.4h |
| 28 | 5.1 | 【CAN上位机】EBI禅道问题 | manual | 2d | 2024-01-31 A | 2024-02-01 | 90% | 0.2d |  | 李露露 | 16h | 14.4h |
| 29 | 5.2 | **【CAN上位机】EBI事件记录** |  | 14d | 2024-02-02 | 2024-02-21 |  |  |  | 李露露 | 136h |  |
| 30 | 5.2.1 | 了解方案流程 | manual | 1d | 2024-02-02 | 2024-02-02 |  |  |  | 李露露 | 8h |  |
| 31 | 5.2.2 | 开发功能及自测 | manual | 2d | 2024-02-19 | 2024-02-20 |  |  |  | 李露露 | 16h |  |
| 32 | 5.3 | 【LEO上位机】双语版 | manual | 3d | 2024-02-19 | 2024-02-21 |  |  |  | 钟庆亮 | 24h |  |
